# HRSolutions "POC" SuccessFactors

How a schedule from MS Project changed from version to version. A marks actual dates.

## Version 1 (data date 2015-09-02, saved 2015-09-02, file Cronograma BRFoods.mpp)

Note of the change: Inicial

| ID | WBS | Task | Duration | Start | Finish | Predecessors | Complete | Total float | Constraint |
| --- | --- | --- | --- | --- | --- | --- | --- | --- | --- |
| 1 | 1 | **Preparação do Projeto (POC) Employee Central** | 5d | 2015-08-31 A | 2015-09-04 A |  | 100% |  |  |
| 2 |  | Definição e Preparação do Projecto | 3d | 2015-08-31 A | 2015-09-02 A |  | 100% |  | start no earlier than 2015-08-31 |
| 3 |  | KickOff | 1d | 2015-09-03 A | 2015-09-03 A | 2 | 100% |  |  |
| 4 |  | Cronograma Detalhado | 1d | 2015-09-04 A | 2015-09-04 A | 3 | 100% |  |  |
| 5 | 2 | **Análise e Desenho do Escopo** | 5d | 2015-09-11 | 2015-09-18 |  |  |  |  |
| 6 |  | Validar Cenários SAP HCM | 3d | 2015-09-07 | 2015-09-09 | 4 |  | 0d | start no earlier than 2015-09-07 |
| 7 |  | Definir do WorkBook do EC | 2d | 2015-09-10 | 2015-09-11 | 6 |  | 14d | start no earlier than 2015-09-10 |
| 8 |  | Criar mapeamentos PI | 2d | 2015-09-10 | 2015-09-11 | 6 |  | 14d | finish no earlier than 2015-09-11 |
| 9 |  | Carregar Objetos SAP (Programa, Tabelas, Classes e etc.) | 2d | 2015-09-10 | 2015-09-11 | 6 |  | 0d | finish no earlier than 2015-09-11 |
| 10 | 3 | **Realização da Parametrização e Desenvolvimentos** | 10d | 2015-09-14 | 2015-09-25 |  |  | 0d |  |
| 11 |  | Configurar Campos (Inf. Org., Inf. Pessoais, Form. Academica e etc.) | 5d | 2015-09-14 | 2015-09-18 | 9 |  | 0d |  |
| 12 |  | Configurar Picklists | 1d | 2015-09-21 | 2015-09-21 | 11 |  | 8d |  |
| 13 |  | Configurar Rubricas | 1d | 2015-09-21 | 2015-09-21 | 11 |  | 8d |  |
| 14 |  | Configurar Tipos e Motivos de Medida | 3d | 2015-09-21 | 2015-09-23 | 11 |  | 0d |  |
| 15 |  | Configurar WorkFlows | 2d | 2015-09-14 | 2015-09-15 | 9 |  | 12d |  |
| 16 |  | Configurar Integração SAP - > EC | 5d | 2015-09-14 | 2015-09-18 | 9 |  | 9d |  |
| 17 |  | Configurar Integração EC - > SAP | 5d | 2015-09-14 | 2015-09-18 | 9 |  | 9d |  |
| 18 |  | Configurar Tema da Instancia (Cores, Logo, Página de Login e etc.) | 1d | 2015-09-14 | 2015-09-14 | 9 |  | 13d |  |
| 19 |  | Configurar Perfis | 2d | 2015-09-24 | 2015-09-25 | 14 |  | 0d |  |
| 20 | 4 | **Testes Finais e Validações de Cenários** | 3d | 2015-09-28 | 2015-09-30 |  |  | 0d |  |
| 21 |  | Testar Admissão (SAP- > EC) | 1d | 2015-09-28 | 2015-09-28 | 19 |  | 3d |  |
| 22 |  | Testar Demissão (SAP- > EC) | 1d | 2015-09-28 | 2015-09-28 | 19 |  | 3d |  |
| 23 |  | Testar Movimentação (SAP- > EC) | 1d | 2015-09-28 | 2015-09-28 | 19 |  | 0d |  |
| 24 |  | Testar Admissão (EC- > SAP) | 1d | 2015-09-29 | 2015-09-29 | 23 |  | 2d |  |
| 25 |  | Testar Demissão (EC- > SAP) | 1d | 2015-09-29 | 2015-09-29 | 23 |  | 2d |  |
| 26 |  | Testar Movimentação (EC- > SAP) | 1d | 2015-09-29 | 2015-09-29 | 23 |  | 0d |  |
| 27 |  | Processar folha SAP HCM | 1d | 2015-09-30 | 2015-09-30 | 26 |  | 0d |  |
| 28 | 5 | **Apresentação da (POC) SuccessFactors EC** | 1d | 2015-10-01 | 2015-10-01 |  |  |  |  |
| 29 |  | Apresentação e validaçao dos cenarios da POC | 1d | 2015-10-01 | 2015-10-01 | 27 |  | 0d |  |

## Version 2 (data date 2015-09-14, saved 2015-09-15, file Cronograma BRFoods - 14.09.2015.mpp)

Note of the change: Inicial

Last finish stays 2015-10-01. Complete tasks 3 → 6.

Changed:

| ID | Task | Start | Finish | Complete | Total float |
| --- | --- | --- | --- | --- | --- |
| 5 | **Análise e Desenho do Escopo** |  |  | 0% → 68% |  |
| 6 | Validar Cenários SAP HCM | 2015-09-07 A |  | 0% → 95% | 0d → 1.3d |
| 7 | Definir do WorkBook do EC | 2015-09-10 A |  | 0% → 65% |  |
| 9 | Carregar Objetos SAP (Programa, Tabelas, Classes e etc.) | 2015-09-10 A | 2015-09-11 A | 0% → 100% | 0d → none |
| 10 | **Realização da Parametrização e Desenvolvimentos** | 2015-09-14 A |  | 0% → 23% | 0d → 4d |
| 11 | Configurar Campos (Inf. Org., Inf. Pessoais, Form. Academica e etc.) | 2015-09-14 A |  | 0% → 55% | 0d → 6d |
| 18 | Configurar Tema da Instancia (Cores, Logo, Página de Login e etc.) | 2015-09-14 A | 2015-09-14 A | 0% → 100% | 13d → none |
| 19 | Configurar Perfis | 2015-09-24 A | 2015-09-25 A | 0% → 100% | 0d → none |

## Version 3 (data date 2015-09-21, saved 2015-09-22, file Cronograma BRFoods - 22.09.2015.mpp)

Note of the change: Inicial

Last finish stays 2015-10-01. Complete tasks 6 → 11.

Changed:

| ID | Task | Start | Finish | Complete | Total float |
| --- | --- | --- | --- | --- | --- |
| 5 | **Análise e Desenho do Escopo** |  |  | 68% → 89% |  |
| 6 | Validar Cenários SAP HCM |  | 2015-09-09 A | 95% → 100% | 1.3d → none |
| 7 | Definir do WorkBook do EC |  | 2015-09-11 A | 65% → 100% | 14d → none |
| 8 | Criar mapeamentos PI | 2015-09-10 A |  | 0% → 50% |  |
| 10 | **Realização da Parametrização e Desenvolvimentos** |  |  | 23% → 55% |  |
| 11 | Configurar Campos (Inf. Org., Inf. Pessoais, Form. Academica e etc.) |  | 2015-09-18 A | 55% → 100% | 6d → none |
| 12 | Configurar Picklists | 2015-09-21 A | 2015-09-21 A | 0% → 100% | 8d → none |
| 13 | Configurar Rubricas | 2015-09-21 A | 2015-09-21 A | 0% → 100% | 8d → none |
| 14 | Configurar Tipos e Motivos de Medida | 2015-09-21 A |  | 0% → 75% |  |
| 15 | Configurar WorkFlows | 2015-09-14 A |  | 0% → 75% |  |

## Version 4 (data date 2015-09-28, saved 2015-09-30, file Cronograma BRFoods - 28.09.2015 - Replanejamento - Copy.mpp)

Note of the change: Inicial

Last finish 2015-10-01 → 2015-10-07 (+6d). Complete tasks 11 → 14.

Changed:

| ID | Task | Start | Finish | Duration | Complete | Total float | Predecessors |
| --- | --- | --- | --- | --- | --- | --- | --- |
| 5 | **Análise e Desenho do Escopo** |  |  |  | 89% → 100% |  |  |
| 8 | Criar mapeamentos PI |  | 2015-09-11 A |  | 50% → 100% | 14d → none |  |
| 10 | **Realização da Parametrização e Desenvolvimentos** |  | 2015-09-25 → 2015-09-29 (+4d) | 10d → 12d | 55% → 70% | 4d → 6d |  |
| 14 | Configurar Tipos e Motivos de Medida |  | 2015-09-23 A |  | 75% → 100% | 6d → none |  |
| 15 | Configurar WorkFlows |  | 2015-09-15 A |  | 75% → 100% | 12d → none |  |
| 16 | Configurar Integração SAP - > EC | 2015-09-14 → 2015-09-23 A (+9d) | 2015-09-18 → 2015-09-29 (+11d) |  | 0% → 50% | 9d → -4d |  |
| 20 | **Testes Finais e Validações de Cenários** | 2015-09-28 → 2015-09-30 (+2d) | 2015-09-30 → 2015-10-06 (+6d) | 3d → 5d |  | 0d → -4d |  |
| 21 | Testar Admissão (SAP- > EC) | 2015-09-28 → 2015-09-30 (+2d) | 2015-09-28 → 2015-09-30 (+2d) |  |  | 3d → -4d | 19 → 16 |
| 22 | Testar Demissão (SAP- > EC) | 2015-09-28 → 2015-10-01 (+3d) | 2015-09-28 → 2015-10-01 (+3d) |  |  | 3d → -4d | 19 → 21 |
| 23 | Testar Movimentação (SAP- > EC) | 2015-09-28 → 2015-10-02 (+4d) | 2015-09-28 → 2015-10-02 (+4d) |  |  | 0d → -4d | 19 → 22 |
| 24 | Testar Admissão (EC- > SAP) | 2015-09-29 → 2015-10-05 (+6d) | 2015-09-29 → 2015-10-05 (+6d) |  |  |  |  |
| 25 | Testar Demissão (EC- > SAP) | 2015-09-29 → 2015-10-05 (+6d) | 2015-09-29 → 2015-10-05 (+6d) |  |  |  |  |
| 26 | Testar Movimentação (EC- > SAP) | 2015-09-29 → 2015-10-05 (+6d) | 2015-09-29 → 2015-10-05 (+6d) |  |  | 0d → -4d |  |
| 27 | Processar folha SAP HCM | 2015-09-30 → 2015-10-06 (+6d) | 2015-09-30 → 2015-10-06 (+6d) |  |  | 0d → -4d |  |
| 29 | Apresentação e validaçao dos cenarios da POC | 2015-10-01 → 2015-10-07 (+6d) | 2015-10-01 → 2015-10-07 (+6d) |  |  | 0d → -4d |  |

## Version 5 (data date 2015-10-01, saved 2015-10-02, file Cronograma BRFoods - 28.09.2015 - Replanejamento.mpp)

Note of the change: Inicial

Last finish 2015-10-07 → 2015-10-13 (+6d). Complete tasks 14 → 15.

Changed:

| ID | Task | Start | Finish | Duration | Complete | Total float | Predecessors | Other |
| --- | --- | --- | --- | --- | --- | --- | --- | --- |
| 10 | **Realização da Parametrização e Desenvolvimentos** |  | 2015-09-29 → 2015-10-06 (+7d) | 12d → 17d | 70% → 84% | 6d → 0d |  | baseline finish 2015-09-25 → 2015-10-06 |
| 16 | Configurar Integração SAP - > EC |  | 2015-09-29 A |  | 50% → 100% | -4d → none |  | baseline start 2015-09-14 → 2015-09-23; baseline finish 2015-09-18 → 2015-09-29 |
| 17 | Configurar Integração EC - > SAP | 2015-09-14 → 2015-09-30 A (+16d) | 2015-09-18 → 2015-10-06 (+18d) |  | 0% → 20% | 13d → -7d | 9 → 16 | baseline start 2015-09-14 → 2015-09-30; baseline finish 2015-09-18 → 2015-10-06 |
| 20 | **Testes Finais e Validações de Cenários** | 2015-09-30 → 2015-10-07 (+7d) | 2015-10-06 → 2015-10-09 (+3d) | 5d → 3d |  | -4d → -7d |  | baseline start 2015-09-28 → 2015-10-07; baseline finish 2015-09-30 → 2015-10-09 |
| 21 | Testar Admissão (SAP- > EC) | 2015-09-30 → 2015-10-07 (+7d) | 2015-09-30 → 2015-10-07 (+7d) |  |  | -4d → 3d | 16 → 17 | baseline start 2015-09-28 → 2015-10-07; baseline finish 2015-09-28 → 2015-10-07 |
| 22 | Testar Demissão (SAP- > EC) | 2015-10-01 → 2015-10-07 (+6d) | 2015-10-01 → 2015-10-07 (+6d) |  |  | -4d → 3d | 21 → 17 | baseline start 2015-09-28 → 2015-10-07; baseline finish 2015-09-28 → 2015-10-07 |
| 23 | Testar Movimentação (SAP- > EC) | 2015-10-02 → 2015-10-07 (+5d) | 2015-10-02 → 2015-10-07 (+5d) |  |  | -4d → -7d | 22 → 17 | baseline start 2015-09-28 → 2015-10-07; baseline finish 2015-09-28 → 2015-10-07 |
| 24 | Testar Admissão (EC- > SAP) | 2015-10-05 → 2015-10-08 (+3d) | 2015-10-05 → 2015-10-08 (+3d) |  |  |  |  | baseline start 2015-09-29 → 2015-10-08; baseline finish 2015-09-29 → 2015-10-08 |
| 25 | Testar Demissão (EC- > SAP) | 2015-10-05 → 2015-10-08 (+3d) | 2015-10-05 → 2015-10-08 (+3d) |  |  |  |  | baseline start 2015-09-29 → 2015-10-08; baseline finish 2015-09-29 → 2015-10-08 |
| 26 | Testar Movimentação (EC- > SAP) | 2015-10-05 → 2015-10-08 (+3d) | 2015-10-05 → 2015-10-08 (+3d) |  |  | -4d → -7d |  | baseline start 2015-09-29 → 2015-10-08; baseline finish 2015-09-29 → 2015-10-08 |
| 27 | Processar folha SAP HCM | 2015-10-06 → 2015-10-09 (+3d) | 2015-10-06 → 2015-10-09 (+3d) |  |  | -4d → -7d |  | baseline start 2015-09-30 → 2015-10-09; baseline finish 2015-09-30 → 2015-10-09 |
| 29 | Apresentação e validaçao dos cenarios da POC | 2015-10-07 → 2015-10-13 (+6d) | 2015-10-07 → 2015-10-13 (+6d) |  |  | -4d → -7d |  | baseline start 2015-10-01 → 2015-10-13; baseline finish 2015-10-01 → 2015-10-13 |

## Version 6 (data date 2015-10-05, saved 2015-10-06, file Cronograma BRFoods - 06.10.2015 - Replanejamento - V2.mpp)

Note of the change: Inicial

Last finish 2015-10-13 → 2015-10-16 (+3d).

Added:

| ID | Task | Duration | Start | Finish | Predecessors | Resources |
| --- | --- | --- | --- | --- | --- | --- |
| 28 | **Equalização Pós-Refresh QAS** | 3d | 2015-10-13 | 2015-10-15 | 27 |  |
| 29 | Transporte de Request | 0.5d | 2015-10-13 | 2015-10-13 | 27 | Arquiteto Soluções / Equipe BRF |
| 30 | Configurações do ambiente | 0.5d | 2015-10-13 | 2015-10-13 | 29 | Arquiteto Soluções / Equipe BRF |
| 31 | Teste SAP -> EC | 1d | 2015-10-14 | 2015-10-14 | 30 | Consultor SuccessFactors |
| 32 | Teste EC -> SAP | 1d | 2015-10-14 | 2015-10-14 | 30 | Funcional SAP HCM |
| 33 | Teste folha SAP HCM | 1d | 2015-10-15 | 2015-10-15 | 32 | Funcional SAP HCM PY |

Changed:

| ID | Task | Start | Finish | Complete | Total float | Predecessors | Other |
| --- | --- | --- | --- | --- | --- | --- | --- |
| 10 | **Realização da Parametrização e Desenvolvimentos** |  |  | 84% → 94% |  |  |  |
| 17 | Configurar Integração EC - > SAP |  |  | 20% → 70% | -7d → -10d |  |  |
| 34 | **Apresentação da (POC) SuccessFactors EC** | 2015-10-01 → 2015-10-16 (+15d) | 2015-10-01 → 2015-10-16 (+15d) |  |  |  |  |
| 35 | Apresentação e validaçao dos cenarios da POC | 2015-10-13 → 2015-10-16 (+3d) | 2015-10-13 → 2015-10-16 (+3d) |  | -7d → 0d | 27 → 33 | baseline start 2015-10-13 → 2015-10-16; baseline finish 2015-10-13 → 2015-10-16 |

## Version 7 (data date 2015-10-14, saved 2015-10-15, file Cronograma BRFoods - 15.10.2015 - Replanejamento - V2.mpp)

Note of the change: Inicial

Last finish stays 2015-10-16. Complete tasks 15 → 16.

Changed:

| ID | Task | Finish | Complete | Total float | Other |
| --- | --- | --- | --- | --- | --- |
| 10 | **Realização da Parametrização e Desenvolvimentos** | 2015-10-06 A | 94% → 100% | 0d → none |  |
| 17 | Configurar Integração EC - > SAP | 2015-10-06 A | 70% → 100% | -10d → none |  |
| 34 | **Apresentação da (POC) SuccessFactors EC** |  |  |  | baseline start 2015-10-01 → 2015-10-16; baseline finish 2015-10-01 → 2015-10-16 |

## Version 8 (data date 2015-11-16, saved 2015-11-16, file Cronograma BRFoods - 16.11.2015 - Replanejamento - V2.mpp)

Last finish 2015-10-16 → 2015-12-02 (+47d).

Changed:

| ID | Task | Start | Finish | Duration | Total float | Predecessors | Other |
| --- | --- | --- | --- | --- | --- | --- | --- |
| 10 | **Realização da Parametrização e Desenvolvimentos** |  | 2015-10-06 A → 2015-11-16 A (+41d) | 17d → 45d |  |  | baseline finish 2015-10-06 → 2015-11-16 |
| 17 | Configurar Integração EC - > SAP |  | 2015-10-06 A → 2015-11-16 A (+41d) | 5d → 33d |  |  | constraint none → finish no earlier than 2015-11-16; baseline finish 2015-10-06 → 2015-11-16 |
| 20 | **Testes Finais e Validações de Cenários** | 2015-10-07 → 2015-11-17 (+41d) | 2015-10-09 → 2015-11-26 (+48d) | 3d → 7d | 0d → -32d |  | baseline start 2015-10-07 → 2015-11-17; baseline finish 2015-10-09 → 2015-11-26 |
| 21 | Testar Admissão (SAP- > EC) | 2015-10-07 → 2015-11-17 (+41d) | 2015-10-07 → 2015-11-17 (+41d) |  | 6d → -32d |  | baseline start 2015-10-07 → 2015-11-17; baseline finish 2015-10-07 → 2015-11-17 |
| 22 | Testar Demissão (SAP- > EC) | 2015-10-07 → 2015-11-18 (+42d) | 2015-10-07 → 2015-11-18 (+42d) |  | 6d → -32d | 17 → 21 | baseline start 2015-10-07 → 2015-11-18; baseline finish 2015-10-07 → 2015-11-18 |
| 23 | Testar Movimentação (SAP- > EC) | 2015-10-07 → 2015-11-19 (+43d) | 2015-10-07 → 2015-11-19 (+43d) |  | 0d → -32d | 17 → 22 | baseline start 2015-10-07 → 2015-11-19; baseline finish 2015-10-07 → 2015-11-19 |
| 24 | Testar Admissão (EC- > SAP) | 2015-10-08 → 2015-11-23 (+46d) | 2015-10-08 → 2015-11-23 (+46d) |  | 5d → -32d |  | baseline start 2015-10-08 → 2015-11-23; baseline finish 2015-10-08 → 2015-11-23 |
| 25 | Testar Demissão (EC- > SAP) | 2015-10-08 → 2015-11-24 (+47d) | 2015-10-08 → 2015-11-24 (+47d) |  | 5d → -32d | 23 → 24 | baseline start 2015-10-08 → 2015-11-24; baseline finish 2015-10-08 → 2015-11-24 |
| 26 | Testar Movimentação (EC- > SAP) | 2015-10-08 → 2015-11-25 (+48d) | 2015-10-08 → 2015-11-25 (+48d) |  | 0d → -32d | 23 → 25 | baseline start 2015-10-08 → 2015-11-25; baseline finish 2015-10-08 → 2015-11-25 |
| 27 | Processar folha SAP HCM | 2015-10-09 → 2015-11-26 (+48d) | 2015-10-09 → 2015-11-26 (+48d) |  | 0d → -32d |  | baseline start 2015-10-09 → 2015-11-26; baseline finish 2015-10-09 → 2015-11-26 |
| 28 | **Equalização Pós-Refresh QAS** | 2015-10-13 → 2015-11-27 (+45d) | 2015-10-15 → 2015-12-01 (+47d) |  | 0d → -32d |  | baseline start 2015-10-13 → 2015-11-27; baseline finish 2015-10-15 → 2015-12-01 |
| 29 | Transporte de Request | 2015-10-13 → 2015-11-27 (+45d) | 2015-10-13 → 2015-11-27 (+45d) |  | 0d → -32d |  | baseline start 2015-10-13 → 2015-11-27; baseline finish 2015-10-13 → 2015-11-27 |
| 30 | Configurações do ambiente | 2015-10-13 → 2015-11-27 (+45d) | 2015-10-13 → 2015-11-27 (+45d) |  | 0d → -32d |  | baseline start 2015-10-13 → 2015-11-27; baseline finish 2015-10-13 → 2015-11-27 |
| 31 | Teste SAP -> EC | 2015-10-14 → 2015-11-30 (+47d) | 2015-10-14 → 2015-11-30 (+47d) |  |  |  | baseline start 2015-10-14 → 2015-11-30; baseline finish 2015-10-14 → 2015-11-30 |
| 32 | Teste EC -> SAP | 2015-10-14 → 2015-11-30 (+47d) | 2015-10-14 → 2015-11-30 (+47d) |  | 0d → -32d |  | baseline start 2015-10-14 → 2015-11-30; baseline finish 2015-10-14 → 2015-11-30 |
| 33 | Teste folha SAP HCM | 2015-10-15 → 2015-12-01 (+47d) | 2015-10-15 → 2015-12-01 (+47d) |  | 0d → -32d |  | baseline start 2015-10-15 → 2015-12-01; baseline finish 2015-10-15 → 2015-12-01 |
| 35 | Apresentação e validaçao dos cenarios da POC | 2015-10-16 → 2015-12-02 (+47d) | 2015-10-16 → 2015-12-02 (+47d) |  | 0d → -32d |  | baseline start 2015-10-16 → 2015-12-02; baseline finish 2015-10-16 → 2015-12-02 |

## Version 9 (data date 2015-11-23, saved 2015-11-24, file Cronograma BRFoods - 23.11.2015 - Replanejamento - V2.mpp)

Note of the change: StatusReport - 24.11.2015

Last finish stays 2015-12-02. Complete tasks 16 → 19.

Changed:

| ID | Task | Start | Finish | Complete | Total float |
| --- | --- | --- | --- | --- | --- |
| 20 | **Testes Finais e Validações de Cenários** | 2015-11-17 A |  | 0% → 54% | -32d → -3d |
| 21 | Testar Admissão (SAP- > EC) | 2015-11-17 A | 2015-11-17 A | 0% → 100% | -32d → none |
| 22 | Testar Demissão (SAP- > EC) | 2015-11-18 A | 2015-11-18 A | 0% → 100% | -32d → none |
| 23 | Testar Movimentação (SAP- > EC) | 2015-11-19 A | 2015-11-19 A | 0% → 100% | -32d → none |
| 24 | Testar Admissão (EC- > SAP) | 2015-11-23 A |  | 0% → 80% |  |

## Version 10 (data date 2015-11-26, saved 2015-11-27, file Cronograma BRFoods - 26.11.2015 - Replanejamento - V2.mpp)

Note of the change: Ajustes 28.11.2015

Last finish stays 2015-12-02. Complete tasks 19 → 21.

Changed:

| ID | Task | Start | Finish | Complete | Total float |
| --- | --- | --- | --- | --- | --- |
| 20 | **Testes Finais e Validações de Cenários** |  |  | 54% → 76% | -3d → -1d |
| 24 | Testar Admissão (EC- > SAP) |  | 2015-11-23 A | 80% → 100% | -32d → none |
| 25 | Testar Demissão (EC- > SAP) | 2015-11-24 A | 2015-11-24 A | 0% → 100% | -32d → none |
| 26 | Testar Movimentação (EC- > SAP) | 2015-11-25 A |  | 0% → 30% |  |

## Version 11 (data date 2015-12-01, saved 2015-12-01, file Cronograma BRFoods - 01.12.2015 - Replanejamento - V2.mpp)

Note of the change: Ajustes 01.12.2015

Last finish stays 2015-12-02. Complete tasks 21 → 28.

Changed:

| ID | Task | Start | Finish | Complete | Total float |
| --- | --- | --- | --- | --- | --- |
| 20 | **Testes Finais e Validações de Cenários** |  | 2015-11-26 A | 76% → 100% | -1d → none |
| 26 | Testar Movimentação (EC- > SAP) |  | 2015-11-25 A | 30% → 100% | -32d → none |
| 27 | Processar folha SAP HCM | 2015-11-26 A | 2015-11-26 A | 0% → 100% | -32d → none |
| 28 | **Equalização Pós-Refresh QAS** | 2015-11-27 A | 2015-12-01 A | 0% → 100% | -32d → none |
| 29 | Transporte de Request | 2015-11-27 A | 2015-11-27 A | 0% → 100% | -32d → none |
| 30 | Configurações do ambiente | 2015-11-27 A | 2015-11-27 A | 0% → 100% | -32d → none |
| 31 | Teste SAP -> EC | 2015-11-30 A | 2015-11-30 A | 0% → 100% | 2d → none |
| 32 | Teste EC -> SAP | 2015-11-30 A | 2015-11-30 A | 0% → 100% | -32d → none |
| 33 | Teste folha SAP HCM | 2015-12-01 A | 2015-12-01 A | 0% → 100% | -32d → none |
